# Sample project

How a schedule from MS Project changed from version to version. A marks actual dates.

## Version 1 (saved 2020-11-20)

Note of the change: Sample files and screenshots added

| ID | WBS | Task | Duration | Start | Finish | Predecessors | Total float |
| --- | --- | --- | --- | --- | --- | --- | --- |
| 1 |  | Project's start | 0d | 2022-01-01 | 2022-01-01 |  | 0d |
| 3 | 2 | **Software system development project** | 95d? | 2022-01-03 | 2022-05-13 |  | 0d |
| 4 | 2.1 | **Initiating** | 6d | 2022-01-03 | 2022-01-10 |  | 0d |
| 5 |  | Kick-off meeting | 1d | 2022-01-03 | 2022-01-03 | 1 | 0d |
| 6 |  | Contract's negotiations | 5d | 2022-01-04 | 2022-01-10 | 5 | 0d |
| 7 |  | Contract signed | 0d | 2022-01-10 | 2022-01-10 | 6 | 0d |
| 9 | 2.2 | **Planning and analysis** | 27d | 2022-01-11 | 2022-02-16 |  | 0d |
| 10 |  | Business-processes' examination | 10d | 2022-01-11 | 2022-01-24 | 7 | 0d |
| 11 |  | Creating a report | 5d | 2022-01-25 | 2022-01-31 | 10 | 0d |
| 12 |  | Report Delivery | 5d | 2022-02-01 | 2022-02-07 | 11 | 0d |
| 13 |  | Detailed shedule delivery | 5d | 2022-02-08 | 2022-02-14 | 12 | 2d |
| 14 |  | Project charter delivery | 7d | 2022-02-08 | 2022-02-16 | 12 | 0d |
| 15 |  | Planning and analysis phase completed | 0d | 2022-02-16 | 2022-02-16 | 11, 12, 13, 14 | 0d |
| 17 | 2.3 | **Development** | 24d? | 2022-02-17 | 2022-03-22 |  | 0d |
| 18 |  | Infrastructure preparation | 7d | 2022-02-17 | 2022-02-25 | 15 | 16d |
| 19 |  | Infrastructure ready | 1d? | 2022-02-28 | 2022-02-28 | 18 | 16d |
| 20 | 2.3.3 | **Coding and initial testing** | 24d | 2022-02-17 | 2022-03-22 |  | 0d |
| 21 | 2.3.3.1 | **Subsystem 1** | 22d | 2022-02-17 | 2022-03-18 |  | 2d |
| 22 | 2.3.3.1.1 | **Module 1** | 13d | 2022-02-17 | 2022-03-07 |  | 2d |
| 23 |  | Coding | 10d | 2022-02-17 | 2022-03-02 | 15 | 2d |
| 24 |  | Testing | 3d | 2022-03-03 | 2022-03-07 | 23 | 2d |
| 25 | 2.3.3.1.2 | **Module 2** | 9d | 2022-03-08 | 2022-03-18 |  | 2d |
| 26 |  | Coding | 7d | 2022-03-08 | 2022-03-16 | 24 | 2d |
| 27 |  | Testing | 2d | 2022-03-17 | 2022-03-18 | 26 | 2d |
| 28 | 2.3.3.2 | **Subsystem 2** | 24d | 2022-02-17 | 2022-03-22 |  | 0d |
| 29 | 2.3.3.2.1 | **Module 3** | 9d | 2022-02-17 | 2022-03-01 |  | 0d |
| 30 |  | Coding | 8d | 2022-02-17 | 2022-02-28 | 15 | 0d |
| 31 |  | Testing | 1d | 2022-03-01 | 2022-03-01 | 30 | 0d |
| 32 | 2.3.3.2.2 | **Module 4** | 15d | 2022-03-02 | 2022-03-22 |  | 0d |
| 33 |  | Coding | 12d | 2022-03-02 | 2022-03-17 | 31 | 0d |
| 34 |  | Testing | 3d | 2022-03-18 | 2022-03-22 | 33 | 0d |
| 35 |  | All coding done and ready for acceptance testing | 0d | 2022-03-22 | 2022-03-22 | 19, 20 | 0d |
| 37 | 2.4 | **Acceptance testing** | 30d | 2022-03-23 | 2022-05-03 |  | 0d |
| 38 |  | Modules' testing | 5d | 2022-03-23 | 2022-03-29 | 35 | 0d |
| 39 |  | Perfomance testing | 5d | 2022-03-23 | 2022-03-29 | 35 | 0d |
| 40 |  | Integration testing | 7d | 2022-03-30 | 2022-04-07 | 38, 39 | 0d |
| 41 |  | Error correction | 5d | 2022-04-08 | 2022-04-14 | 40 | 0d |
| 42 |  | New requirments' implementation | 7d | 2022-04-15 | 2022-04-25 | 41 | 0d |
| 43 | 2.4.6 | **Testing - second iteration** | 6d | 2022-04-26 | 2022-05-03 |  | 0d |
| 44 |  | Modules' testing | 3d | 2022-04-26 | 2022-04-28 | 38, 39, 40, 41, 42 | 0d |
| 45 |  | Perfomance testing | 2d | 2022-04-26 | 2022-04-27 | 38, 39, 40, 41, 42 | 1d |
| 46 |  | Integration testing | 3d | 2022-04-29 | 2022-05-03 | 44, 45 | 0d |
| 47 |  | System accepted successfully | 0d | 2022-05-03 | 2022-05-03 | 42, 43 | 0d |
| 49 | 2.5 | **Work closing** | 8d | 2022-05-04 | 2022-05-13 |  | 0d |
| 50 |  | Certificate of completion's signment | 3d | 2022-05-04 | 2022-05-06 | 47 | 0d |
| 51 |  | Billing and paymemts | 5d | 2022-05-09 | 2022-05-13 | 50 | 0d |
| 52 |  | Work accomplised | 0d | 2022-05-06 | 2022-05-06 | 50 | 5d |
| 53 |  | Contract closed | 0d | 2022-05-06 | 2022-05-06 | 50 | 5d |

## Version 2 (saved 2021-04-03)

Note of the change: Added % complete support

Last finish stays 2022-05-13. Complete tasks 0 → 1.

Changed:

| ID | Task | Start | Finish | Complete | Total float |
| --- | --- | --- | --- | --- | --- |
| 3 | **Software system development project** | 2022-01-03 A |  | 0% → 2% |  |
| 4 | **Initiating** | 2022-01-03 A |  | 0% → 38% |  |
| 5 | Kick-off meeting | 2022-01-03 A | 2022-01-03 A | 0% → 100% | 0d → none |
| 6 | Contract's negotiations | 2022-01-04 A |  | 0% → 25% |  |

## Version 3 (saved 2021-11-04)

Note of the change: Add calendar export

Last finish 2022-05-13 → 2022-05-17 (+4d).

Changed:

| ID | Task | Start | Finish | Duration | Other |
| --- | --- | --- | --- | --- | --- |
| 3 | **Software system development project** |  | 2022-05-13 → 2022-05-17 (+4d) | 95d? → 94.75d? |  |
| 4 | **Initiating** |  | 2022-01-10 → 2022-01-12 (+2d) | 6d → 5.75d |  |
| 6 | Contract's negotiations |  | 2022-01-10 → 2022-01-12 (+2d) |  |  |
| 7 | Contract signed | 2022-01-10 → 2022-01-12 (+2d) | 2022-01-10 → 2022-01-12 (+2d) |  |  |
| 9 | **Planning and analysis** | 2022-01-11 → 2022-01-12 (+1d) | 2022-02-16 → 2022-02-18 (+2d) |  |  |
| 10 | Business-processes' examination | 2022-01-11 → 2022-01-12 (+1d) | 2022-01-24 → 2022-01-26 (+2d) |  |  |
| 11 | Creating a report | 2022-01-25 → 2022-01-26 (+1d) | 2022-01-31 → 2022-02-02 (+2d) |  |  |
| 12 | Report Delivery | 2022-02-01 → 2022-02-02 (+1d) | 2022-02-07 → 2022-02-09 (+2d) |  |  |
| 13 | Detailed shedule delivery | 2022-02-08 → 2022-02-09 (+1d) | 2022-02-14 → 2022-02-16 (+2d) |  |  |
| 14 | Project charter delivery | 2022-02-08 → 2022-02-09 (+1d) | 2022-02-16 → 2022-02-18 (+2d) |  |  |
| 15 | Planning and analysis phase completed | 2022-02-16 → 2022-02-18 (+2d) | 2022-02-16 → 2022-02-18 (+2d) |  |  |
| 17 | **Development** | 2022-02-17 → 2022-02-18 (+1d) | 2022-03-22 → 2022-03-24 (+2d) |  |  |
| 18 | Infrastructure preparation | 2022-02-17 → 2022-02-18 (+1d) | 2022-02-25 → 2022-03-01 (+4d) |  |  |
| 19 | Infrastructure ready | 2022-02-28 → 2022-03-01 (+1d) | 2022-02-28 → 2022-03-02 (+2d) |  |  |
| 20 | **Coding and initial testing** | 2022-02-17 → 2022-02-18 (+1d) | 2022-03-22 → 2022-03-24 (+2d) |  |  |
| 21 | **Subsystem 1** | 2022-02-17 → 2022-02-18 (+1d) | 2022-03-18 → 2022-03-22 (+4d) |  |  |
| 22 | **Module 1** | 2022-02-17 → 2022-02-18 (+1d) | 2022-03-07 → 2022-03-09 (+2d) |  |  |
| 23 | Coding | 2022-02-17 → 2022-02-18 (+1d) | 2022-03-02 → 2022-03-04 (+2d) |  |  |
| 24 | Testing | 2022-03-03 → 2022-03-04 (+1d) | 2022-03-07 → 2022-03-09 (+2d) |  |  |
| 25 | **Module 2** | 2022-03-08 → 2022-03-09 (+1d) | 2022-03-18 → 2022-03-22 (+4d) |  |  |
| 26 | Coding | 2022-03-08 → 2022-03-09 (+1d) | 2022-03-16 → 2022-03-18 (+2d) |  |  |
| 27 | Testing | 2022-03-17 → 2022-03-18 (+1d) | 2022-03-18 → 2022-03-22 (+4d) |  |  |
| 28 | **Subsystem 2** | 2022-02-17 → 2022-02-18 (+1d) | 2022-03-22 → 2022-03-24 (+2d) |  |  |
| 29 | **Module 3** | 2022-02-17 → 2022-02-18 (+1d) | 2022-03-01 → 2022-03-03 (+2d) |  |  |
| 30 | Coding | 2022-02-17 → 2022-02-18 (+1d) | 2022-02-28 → 2022-03-02 (+2d) |  |  |
| 31 | Testing | 2022-03-01 → 2022-03-02 (+1d) | 2022-03-01 → 2022-03-03 (+2d) |  |  |
| 32 | **Module 4** | 2022-03-02 → 2022-03-03 (+1d) | 2022-03-22 → 2022-03-24 (+2d) |  |  |
| 33 | Coding | 2022-03-02 → 2022-03-03 (+1d) | 2022-03-17 → 2022-03-21 (+4d) |  |  |
| 34 | Testing | 2022-03-18 → 2022-03-21 (+3d) | 2022-03-22 → 2022-03-24 (+2d) |  |  |
| 35 | All coding done and ready for acceptance testing | 2022-03-22 → 2022-03-24 (+2d) | 2022-03-22 → 2022-03-24 (+2d) |  |  |
| 37 | **Acceptance testing** | 2022-03-23 → 2022-03-24 (+1d) | 2022-05-03 → 2022-05-05 (+2d) |  |  |
| 38 | Modules' testing | 2022-03-23 → 2022-03-24 (+1d) | 2022-03-29 → 2022-03-31 (+2d) |  | resources Analyst 1; Developer 1; Developer 2 → Analyst 1 (diff. Calendar); Developer 1; Developer 2 |
| 39 | Perfomance testing | 2022-03-23 → 2022-03-24 (+1d) | 2022-03-29 → 2022-03-31 (+2d) |  |  |
| 40 | Integration testing | 2022-03-30 → 2022-03-31 (+1d) | 2022-04-07 → 2022-04-11 (+4d) |  | resources Analyst 1 → Analyst 1 (diff. Calendar) |
| 41 | Error correction | 2022-04-08 → 2022-04-11 (+3d) | 2022-04-14 → 2022-04-18 (+4d) |  | resources Analyst 1; Analyst2; Developer 1; Developer 2 → Analyst 1 (diff. Calendar); Analyst2; Developer 1; Developer 2 |
| 42 | New requirments' implementation | 2022-04-15 → 2022-04-18 (+3d) | 2022-04-25 → 2022-04-27 (+2d) |  | resources Analyst 1; Analyst2; Developer 1; Developer 2 → Analyst 1 (diff. Calendar); Analyst2; Developer 1; Developer 2 |
| 43 | **Testing - second iteration** | 2022-04-26 → 2022-04-27 (+1d) | 2022-05-03 → 2022-05-05 (+2d) |  | resources Analyst 1; Analyst2; Contractor; Customer; Developer 1; Developer 2 → Analyst 1 (diff. Calendar); Analyst2; Contractor; Customer; Developer 1; Developer 2 |
| 44 | Modules' testing | 2022-04-26 → 2022-04-27 (+1d) | 2022-04-28 → 2022-05-02 (+4d) |  | resources Analyst 1; Developer 1; Developer 2 → Analyst 1 (diff. Calendar); Developer 1; Developer 2 |
| 45 | Perfomance testing | 2022-04-26 → 2022-04-27 (+1d) | 2022-04-27 → 2022-04-29 (+2d) |  |  |
| 46 | Integration testing | 2022-04-29 → 2022-05-02 (+3d) | 2022-05-03 → 2022-05-05 (+2d) |  | resources Analyst 1 → Analyst 1 (diff. Calendar) |
| 47 | System accepted successfully | 2022-05-03 → 2022-05-05 (+2d) | 2022-05-03 → 2022-05-05 (+2d) |  |  |
| 49 | **Work closing** | 2022-05-04 → 2022-05-05 (+1d) | 2022-05-13 → 2022-05-17 (+4d) |  |  |
| 50 | Certificate of completion's signment | 2022-05-04 → 2022-05-05 (+1d) | 2022-05-06 → 2022-05-10 (+4d) |  |  |
| 51 | Billing and paymemts | 2022-05-09 → 2022-05-10 (+1d) | 2022-05-13 → 2022-05-17 (+4d) |  |  |
| 52 | Work accomplised | 2022-05-06 → 2022-05-10 (+4d) | 2022-05-06 → 2022-05-10 (+4d) |  |  |
| 53 | Contract closed | 2022-05-06 → 2022-05-10 (+4d) | 2022-05-06 → 2022-05-10 (+4d) |  |  |
